# QMS System

Schedule from MS Project, 2020-01-27 to 2022-04-18, costs in $, A marks actual dates.

## Calendars

- Standard: Mon-Fri 08:00-12:00, 13:00-17:00; Sat-Sun off.

## Resources

| Resource | Rate |
| --- | --- |
| Project Manager 1 | 80 |
| Project Manager 2 | 66.53 |
| System Analyst 1 | 65 |
| System Analyst 2 | 63 |
| Quality Engineer 1 | 62 |
| Qulaity Engineer 2 | 50.74 |
| Software Engineer 1 | 60 |
| Software Engineer 2 | 50 |
| Software Engineer 3 | 47.1 |
| Testing Engineer 1 | 30 |
| Testing Engineer 2 | 29 |
| Testing Engineer 3 | 29 |
| Developer 1 | 55 |
| Developer 2 | 55 |
| Developer 3 | 38 |
| Developer 4 | 38 |
| Developer 5 | 38 |
| Developer 6 | 38 |
| Developer 7 | 38 |
| Developer 8 | 38 |
| Developer 9 | 38 |
| Developer 10 | 38 |
| Laptop 1 | 1961.99 |
| Laptop 2 | 1885.69 |
| Laptop 3 | 1885.69 |
| Laptop 4 | 1743.99 |
| Laptop 5 | 1743.99 |
| Laptop 6 | 1743.99 |
| Laptop 7 | 1634.99 |
| Laptop 8 | 1634.99 |
| Laptop 9 | 1416.99 |
| Laptop 10 | 1416.99 |
| Laptop 11 | 1416.99 |
| Laptop 12 | 1362.49 |
| Cellphone 1 | 1098 |
| Cellphone 2 | 981 |
| Cellphone 3 | 872 |
| Cellphone 4 | 872 |
| Cellphone 5 | 872 |
| Cellphone 6 | 872 |
| Cellphone 7 | 872 |
| Cellphone 8 | 763 |
| Cellphone 9 | 763 |
| Cellphone 10 | 763 |
| Cellphone 11 | 654 |
| Cellphone 12 | 654 |
| PDA 1 | 653.99 |
| PDA 2 | 435.99 |
| PDA 3 | 435.99 |
| PDA 4 | 217.99 |
| PDA 5 | 217.99 |
| Desktop 1 | 2397.99 |
| Desktop 2 | 2397.99 |
| Desktop 3 | 1664.6 |
| Desktop 4 | 1664.6 |
| Desktop 5 | 1664.6 |
| Desktop 6 | 1664.6 |
| Desktop 7 | 1504.19 |
| Desktop 8 | 1504.19 |
| Desktop 9 | 1504.19 |
| Desktop 10 | 1504.19 |

## Schedule

| ID | WBS | Task | Type | Duration | Start | Finish | Predecessors | Complete | Remaining | Baseline start | Baseline finish | Baseline duration | Total slack | Free slack | Resources | Work | Actual work | Cost | Baseline cost | Actual cost |
| --- | --- | --- | --- | --- | --- | --- | --- | --- | --- | --- | --- | --- | --- | --- | --- | --- | --- | --- | --- | --- |
| 1 | 1 | **QMS System** |  | 580.47d | 2020-01-27 A | 2022-04-18 |  | 19% | 469.37d | 2020-01-27 | 2022-03-14 | 556d | 0d |  |  | 32304h | 2859.2h | 2,135,589.87 | 2,165,753.54 | 277,370.17 |
| 2 | 1.1 | **Project Initiation** |  | 40d | 2020-01-27 A | 2020-03-20 |  | 99% | 0d | 2020-01-27 | 2020-03-20 | 40d | 540.47d |  |  | 1400h | 1400h | 155,431.83 | 162,735.52 | 154,777.83 |
| 3 | 1.1.1 | Develop Project Charter |  | 10d | 2020-01-27 A | 2020-02-07 A |  | 100% |  | 2020-01-27 | 2020-02-07 | 10d |  |  | Cellphone 1; Cellphone 2; Cellphone 7; Laptop 1; Laptop 2; Laptop 7; PDA 1; PDA 2; PDA 3; Project Manager 1; Project Manager 2; Software Engineer 1 | 240h | 240h | 26,482.04 | 26,482.04 | 26,482.04 |
| 4 | 1.1.2 | Devolop Statement of Work |  | 10d | 2020-02-10 A | 2020-02-21 A | 3 | 100% |  | 2020-02-10 | 2020-02-21 | 10d |  |  | Cellphone 1; Cellphone 3; Cellphone 4; Cellphone 8; Laptop 1; Laptop 3; Laptop 4; Laptop 8; PDA 1; PDA 4; Project Manager 1; Software Engineer 2; System Analyst 1; System Analyst 2 | 320h | 320h | 32,343.64 | 32,343.64 | 32,343.64 |
| 5 | 1.1.3 | Develop Preliminary Scope Development |  | 5d | 2020-02-24 A | 2020-02-28 A | 3, 4 | 100% |  | 2020-02-24 | 2020-02-28 | 5d |  |  | Cellphone 1; Cellphone 2; Cellphone 3; Cellphone 4; Cellphone 7; Cellphone 9; Desktop 1; Developer 1; Laptop 1; Laptop 2; Laptop 3; Laptop 4; Laptop 7; Laptop 9; PDA 1; PDA 2; PDA 3; PDA 5; Project Manager 1; Project Manager 2; Software Engineer 1; Software Engineer 3; System Analyst 1; System Analyst 2 | 280h | 280h | 37,594.49 | 37,594.49 | 37,594.49 |
| 6 | 1.1.4 | Develop Preliminary Architictural Model |  | 10d | 2020-03-02 A | 2020-03-13 | 3, 4, 5 | 99% | 0d | 2020-03-02 | 2020-03-13 | 10d | 545.47d |  | Cellphone 2; Cellphone 4; Cellphone 6; Cellphone 8; Cellphone 9; Laptop 2; Laptop 4; Laptop 6; Laptop 8; Laptop 9; PDA 2; PDA 4; PDA 5; Project Manager 2; Qulaity Engineer 2; Software Engineer 2; Software Engineer 3; System Analyst 2; Cellphone 11 | 400h | 400h | 36,392.22 | 43,695.91 | 35,738.22 |
| 7 | 1.1.5 | Project Initiation Complete |  | 5d | 2020-03-16 A | 2020-03-20 A | 3, 4, 5, 6 | 100% |  | 2020-03-16 | 2020-03-20 | 5d |  |  | Cellphone 1; Cellphone 2; Cellphone 5; Cellphone 6; Laptop 1; Laptop 2; Laptop 5; Laptop 6; PDA 1; PDA 2; Project Manager 1; Project Manager 2; Quality Engineer 1; Qulaity Engineer 2 | 160h | 160h | 22,619.44 | 22,619.44 | 22,619.44 |
| 8 | 1.2 | **Project Plan** |  | 133.2d | 2020-03-23 A | 2020-09-24 |  | 38% | 82.2d | 2020-03-23 | 2020-09-07 | 121d | 0d |  |  | 3456h | 1459.2h | 285,288.93 | 286,971.5 | 122,592.34 |
| 9 | 1.2.1 | Develop Scope Management Plan |  | 10d | 2020-03-23 A | 2020-04-03 A | 2 | 100% |  | 2020-03-23 | 2020-04-03 | 10d |  |  | Cellphone 1; Cellphone 2; Laptop 1; Laptop 2; PDA 1; PDA 2; Project Manager 1; Project Manager 2 | 160h | 160h | 18,739.06 | 18,739.06 | 18,739.06 |
| 10 | 1.2.2 | Develop Change Management Plan |  | 30d | 2020-04-06 A | 2020-05-15 A | 9 | 100% |  | 2020-04-06 | 2020-05-15 | 30d |  |  | Cellphone 3; Cellphone 4; Laptop 3; Laptop 4; System Analyst 1; System Analyst 2 | 240h | 240h | 20,733.68 | 20,733.68 | 20,733.68 |
| 11 | 1.2.3 | Develop Initial Descriptive Budget |  | 57.2d | 2020-05-18 A | 2020-08-05 | 9, 10 | 14% | 49.1d | 2020-05-18 | 2020-07-17 | 45d | 15d | 0d | Cellphone 1; Cellphone 2; Cellphone 4; Laptop 1; Laptop 2; Laptop 4; PDA 1; PDA 2; Project Manager 1; Project Manager 2; System Analyst 2 | 960h | 129.6h | 76,594.97 | 78,277.54 | 11,867.22 |
| 12 | 1.2.4 | Develop Schedule |  | 20d | 2020-08-05 | 2020-09-02 | 10, 11 |  |  | 2020-07-20 | 2020-08-14 | 20d | 15d |  | Cellphone 1; Cellphone 3; Cellphone 7; Laptop 1; Laptop 3; Laptop 7; PDA 1; PDA 3; Project Manager 1; Software Engineer 1; System Analyst 1 | 480h |  | 42,214.65 | 42,214.65 |  |
| 13 | 1.2.5 | Develop Quality Management Plan |  | 35d | 2020-03-23 A | 2020-05-08 A | 2 | 100% |  | 2020-03-23 | 2020-05-08 | 35d |  |  | Cellphone 2; Cellphone 4; Cellphone 5; Cellphone 8; Laptop 2; Laptop 4; Laptop 5; Laptop 8; PDA 2; PDA 4; Project Manager 2; Quality Engineer 1; Software Engineer 2; System Analyst 2 | 800h | 800h | 59,456.64 | 59,456.64 | 59,456.64 |
| 14 | 1.2.6 | Develop Human Resource Plan |  | 15d | 2020-05-18 A | 2020-06-05 | 10, 13 | 54% | 6.9d | 2020-05-18 | 2020-06-05 | 15d | 0d |  | Cellphone 2; Cellphone 3; Laptop 2; Laptop 3; PDA 2; Project Manager 2; System Analyst 1 | 240h | 129.6h | 21,843.97 | 21,843.97 | 11,795.74 |
| 15 | 1.2.7 | Develop Risk Management Plan |  | 70d | 2020-06-08 | 2020-09-23 | 10, 14 |  |  | 2020-06-08 | 2020-09-04 | 65d | 0d |  | Cellphone 2; Cellphone 9; Laptop 2; Laptop 9; PDA 2; PDA 5; Project Manager 2; Software Engineer 3 | 560h |  | 37,517.06 | 37,517.06 |  |
| 16 | 1.2.8 | Project Plan Complete |  | 1d | 2020-09-23 | 2020-09-24 | 9, 10, 11, 12, 13, 14, 15 |  |  | 2020-09-07 | 2020-09-07 | 1d | 0d |  | Cellphone 1; Cellphone 2; Laptop 1; Laptop 2; PDA 1; PDA 2; Project Manager 1; Project Manager 2 | 16h |  | 8,188.9 | 8,188.9 |  |
| 17 | 1.3 | **Project Execution** |  | 406.27d | 2020-09-24 | 2022-04-15 |  |  |  | 2020-09-08 | 2022-03-11 | 394d | 0d |  |  | 27440h |  | 1,691,034.19 | 1,712,211.6 |  |
| 18 | 1.3.1 | **Release 1** |  | 180.45d | 2020-09-24 | 2021-06-03 |  |  |  | 2020-09-08 | 2021-05-10 | 175d | 0d |  |  | 12200h |  | 676,727.48 | 684,274.56 |  |
| 19 | 1.3.1.1 | Analysis Phase |  | 30d | 2020-09-24 | 2020-11-05 | 8 |  |  | 2020-09-08 | 2020-10-19 | 30d | 0d |  | Cellphone 3; Cellphone 4; Cellphone 7; Cellphone 8; Desktop 1; Desktop 2; Developer 1; Developer 2; Laptop 3; Laptop 4; Laptop 7; Laptop 8; PDA 3; PDA 4; Software Engineer 1; Software Engineer 2; System Analyst 1; System Analyst 2 | 1440h |  | 99,248.62 | 99,248.62 |  |
| 20 | 1.3.1.2 | Design Phase |  | 40d | 2020-11-05 | 2020-12-31 | 19 |  |  | 2020-10-20 | 2020-12-14 | 40d | 0d |  | Cellphone 3; Cellphone 4; Cellphone 8; Cellphone 9; Desktop 1; Desktop 2; Desktop 3; Desktop 4; Developer 1; Developer 2; Developer 3; Developer 4; Laptop 3; Laptop 4; Laptop 8; Laptop 9; PDA 4; PDA 5; Software Engineer 2; Software Engineer 3; System Analyst 1; System Analyst 2 | 2560h |  | 150,064.82 | 150,064.82 |  |
| 21 | 1.3.1.3 | Construcion Phase |  | 65.45d | 2020-12-31 | 2021-04-01 | 20 |  |  | 2020-12-15 | 2021-03-08 | 60d | 0d |  | Cellphone 3; Cellphone 4; Desktop 2; Desktop 3; Desktop 4; Desktop 5; Desktop 6; Desktop 7; Desktop 8; Desktop 9; Desktop 10; Developer 2; Developer 3; Developer 4; Developer 5; Developer 6; Developer 7; Developer 8; Developer 9; Developer 10; Laptop 3; Laptop 4; System Analyst 1; System Analyst 2 | 5760h |  | 275,457.74 | 283,004.82 |  |
| 22 | 1.3.1.4 | Validation Phase |  | 25d | 2021-04-01 | 2021-05-06 | 21 |  |  | 2021-03-09 | 2021-04-12 | 25d | 0d |  | Cellphone 2; Cellphone 6; Cellphone 10; Cellphone 11; Cellphone 12; Desktop 5; Desktop 6; Developer 5; Developer 6; Laptop 2; Laptop 6; Laptop 10; Laptop 11; Laptop 12; PDA 2; Project Manager 2; Qulaity Engineer 2; Testing Engineer 1; Testing Engineer 2; Testing Engineer 3 | 1400h |  | 71,769.34 | 71,769.34 |  |
| 23 | 1.3.1.5 | Deployment Phase |  | 15d | 2021-05-06 | 2021-05-27 | 22 |  |  | 2021-04-13 | 2021-05-03 | 15d | 0d |  | Cellphone 3; Cellphone 4; Cellphone 5; Desktop 7; Desktop 8; Desktop 9; Desktop 10; Developer 7; Developer 8; Developer 9; Developer 10; Laptop 3; Laptop 4; Laptop 5; Quality Engineer 1; System Analyst 1; System Analyst 2 | 840h |  | 55,046.43 | 55,046.43 |  |
| 24 | 1.3.1.6 | Closeout |  | 5d | 2021-05-27 | 2021-06-03 | 23 |  |  | 2021-05-04 | 2021-05-10 | 5d | 0d |  | Cellphone 2; Cellphone 3; Cellphone 5; Cellphone 7; Cellphone 10; Laptop 2; Laptop 3; Laptop 5; Laptop 7; Laptop 10; PDA 2; PDA 3; Project Manager 2; Quality Engineer 1; Software Engineer 1; System Analyst 1; Testing Engineer 1 | 200h |  | 25,140.53 | 25,140.53 |  |
| 25 | 1.3.1.7 | Release 1 Complete | milestone | 0d | 2021-06-03 | 2021-06-03 | 24 |  |  | 2021-05-10 | 2021-05-10 | 0d | 0d |  | Cellphone 1; Cellphone 2; Laptop 1; Laptop 2; PDA 1; PDA 2; Project Manager 1; Project Manager 2 |  |  |  |  |  |

| ID | WBS | Task | Type | Duration | Start | Finish | Predecessors | Baseline start | Baseline finish | Baseline duration | Total slack | Resources | Work | Cost | Baseline cost |
| --- | --- | --- | --- | --- | --- | --- | --- | --- | --- | --- | --- | --- | --- | --- | --- |
| 26 | 1.3.2 | **Release 2** |  | 75.27d | 2021-06-03 | 2021-09-16 |  | 2021-05-11 | 2021-08-19 | 73d | 0d |  | 5080h | 338,102.24 | 342,645.68 |
| 27 | 1.3.2.1 | Analysis Phase |  | 10d | 2021-06-03 | 2021-06-17 | 18 | 2021-05-11 | 2021-05-24 | 10d | 0d | Cellphone 3; Cellphone 4; Cellphone 7; Cellphone 8; Desktop 1; Desktop 2; Developer 1; Developer 2; Laptop 3; Laptop 4; Laptop 7; Laptop 8; PDA 3; PDA 4; Software Engineer 1; Software Engineer 2; System Analyst 1; System Analyst 2 | 480h | 43,568.62 | 43,568.62 |
| 28 | 1.3.2.2 | Design Phase |  | 15d | 2021-06-17 | 2021-07-08 | 27 | 2021-05-25 | 2021-06-14 | 15d | 0d | Cellphone 3; Cellphone 4; Cellphone 8; Cellphone 9; Desktop 1; Desktop 2; Desktop 3; Desktop 4; Developer 1; Developer 2; Developer 3; Developer 4; Laptop 3; Laptop 4; Laptop 8; Laptop 9; PDA 4; PDA 5; Software Engineer 2; Software Engineer 3; System Analyst 1; System Analyst 2 | 960h | 67,844.82 | 67,844.82 |
| 29 | 1.3.2.3 | Construcion Phase |  | 27.27d | 2021-07-08 | 2021-08-16 | 28 | 2021-06-15 | 2021-07-19 | 25d | 0d | Cellphone 3; Cellphone 4; Desktop 2; Desktop 3; Desktop 4; Desktop 5; Desktop 6; Desktop 7; Desktop 8; Desktop 9; Desktop 10; Developer 2; Developer 3; Developer 4; Developer 5; Developer 6; Developer 7; Developer 8; Developer 9; Developer 10; Laptop 3; Laptop 4; System Analyst 1; System Analyst 2 | 2400h | 126,701.38 | 131,244.82 |
| 30 | 1.3.2.4 | Validation Phase |  | 10d | 2021-08-16 | 2021-08-30 | 29 | 2021-07-20 | 2021-08-02 | 10d | 0d | Cellphone 2; Cellphone 6; Cellphone 10; Cellphone 11; Cellphone 12; Desktop 5; Desktop 6; Developer 5; Developer 6; Laptop 2; Laptop 6; Laptop 10; Laptop 11; Laptop 12; PDA 2; Project Manager 2; Qulaity Engineer 2; Testing Engineer 1; Testing Engineer 2; Testing Engineer 3 | 560h | 38,016.94 | 38,016.94 |
| 31 | 1.3.2.5 | Deployment Phase |  | 10d | 2021-08-30 | 2021-09-13 | 30 | 2021-08-03 | 2021-08-16 | 10d | 0d | Cellphone 3; Cellphone 4; Cellphone 5; Desktop 7; Desktop 8; Desktop 9; Desktop 10; Developer 7; Developer 8; Developer 9; Developer 10; Laptop 3; Laptop 4; Laptop 5; Quality Engineer 1; System Analyst 1; System Analyst 2 | 560h | 41,366.43 | 41,366.43 |
| 32 | 1.3.2.6 | Closeout |  | 3d | 2021-09-13 | 2021-09-16 | 31 | 2021-08-17 | 2021-08-19 | 3d | 0d | Cellphone 2; Cellphone 3; Cellphone 5; Cellphone 7; Cellphone 10; Laptop 2; Laptop 3; Laptop 5; Laptop 7; Laptop 10; PDA 2; PDA 3; Project Manager 2; Quality Engineer 1; Software Engineer 1; System Analyst 1; Testing Engineer 1 | 120h | 20,604.05 | 20,604.05 |
| 33 | 1.3.2.7 | Release 2 Complete | milestone | 0d | 2021-09-16 | 2021-09-16 | 32 | 2021-08-19 | 2021-08-19 | 0d | 0d | Cellphone 1; Cellphone 2; Laptop 1; Laptop 2; PDA 1; PDA 2; Project Manager 1; Project Manager 2 |  |  |  |
| 34 | 1.3.3 | **Release 3** |  | 75.27d | 2021-09-16 | 2021-12-31 |  | 2021-08-20 | 2021-11-30 | 73d | 0d |  | 5080h | 338,102.24 | 342,645.68 |
| 35 | 1.3.3.1 | Analysis Phase |  | 10d | 2021-09-16 | 2021-09-30 | 26 | 2021-08-20 | 2021-09-02 | 10d | 0d | Cellphone 3; Cellphone 4; Cellphone 7; Cellphone 8; Desktop 1; Desktop 2; Developer 1; Developer 2; Laptop 3; Laptop 4; Laptop 7; Laptop 8; PDA 3; PDA 4; Software Engineer 1; Software Engineer 2; System Analyst 1; System Analyst 2 | 480h | 43,568.62 | 43,568.62 |
| 36 | 1.3.3.2 | Design Phase |  | 15d | 2021-09-30 | 2021-10-21 | 35 | 2021-09-03 | 2021-09-23 | 15d | 0d | Cellphone 3; Cellphone 4; Cellphone 8; Cellphone 9; Desktop 1; Desktop 2; Desktop 3; Desktop 4; Developer 1; Developer 2; Developer 3; Developer 4; Laptop 3; Laptop 4; Laptop 8; Laptop 9; PDA 4; PDA 5; Software Engineer 2; Software Engineer 3; System Analyst 1; System Analyst 2 | 960h | 67,844.82 | 67,844.82 |
| 37 | 1.3.3.3 | Construcion Phase |  | 27.27d | 2021-10-21 | 2021-11-30 | 36 | 2021-09-24 | 2021-10-28 | 25d | 0d | Cellphone 3; Cellphone 4; Desktop 2; Desktop 3; Desktop 4; Desktop 5; Desktop 6; Desktop 7; Desktop 8; Desktop 9; Desktop 10; Developer 2; Developer 3; Developer 4; Developer 5; Developer 6; Developer 7; Developer 8; Developer 9; Developer 10; Laptop 3; Laptop 4; System Analyst 1; System Analyst 2 | 2400h | 126,701.38 | 131,244.82 |
| 38 | 1.3.3.4 | Validation Phase |  | 10d | 2021-11-30 | 2021-12-14 | 37 | 2021-10-29 | 2021-11-11 | 10d | 0d | Cellphone 2; Cellphone 6; Cellphone 10; Cellphone 11; Cellphone 12; Desktop 5; Desktop 6; Developer 5; Developer 6; Laptop 2; Laptop 6; Laptop 10; Laptop 11; Laptop 12; PDA 2; Project Manager 2; Qulaity Engineer 2; Testing Engineer 1; Testing Engineer 2; Testing Engineer 3 | 560h | 38,016.94 | 38,016.94 |
| 39 | 1.3.3.5 | Deployment Phase |  | 10d | 2021-12-14 | 2021-12-28 | 38 | 2021-11-12 | 2021-11-25 | 10d | 0d | Cellphone 3; Cellphone 4; Cellphone 5; Desktop 7; Desktop 8; Desktop 9; Desktop 10; Developer 7; Developer 8; Developer 9; Developer 10; Laptop 3; Laptop 4; Laptop 5; Quality Engineer 1; System Analyst 1; System Analyst 2 | 560h | 41,366.43 | 41,366.43 |
| 40 | 1.3.3.6 | Closeout |  | 3d | 2021-12-28 | 2021-12-31 | 39 | 2021-11-26 | 2021-11-30 | 3d | 0d | Cellphone 2; Cellphone 3; Cellphone 5; Cellphone 7; Cellphone 10; Laptop 2; Laptop 3; Laptop 5; Laptop 7; Laptop 10; PDA 2; PDA 3; Project Manager 2; Quality Engineer 1; Software Engineer 1; System Analyst 1; Testing Engineer 1 | 120h | 20,604.05 | 20,604.05 |
| 41 | 1.3.3.7 | Release 3 Complete | milestone | 0d | 2021-12-31 | 2021-12-31 | 40 | 2021-11-30 | 2021-11-30 | 0d | 0d | Cellphone 1; Cellphone 2; Laptop 1; Laptop 2; PDA 1; PDA 2; Project Manager 1; Project Manager 2 |  |  |  |
| 42 | 1.3.4 | **Release 4** |  | 75.27d | 2021-12-31 | 2022-04-15 |  | 2021-12-01 | 2022-03-11 | 73d | 0d |  | 5080h | 338,102.24 | 342,645.68 |
| 43 | 1.3.4.1 | Analysis Phase |  | 10d | 2021-12-31 | 2022-01-14 | 34 | 2021-12-01 | 2021-12-14 | 10d | 0d | Cellphone 3; Cellphone 4; Cellphone 7; Cellphone 8; Desktop 1; Desktop 2; Developer 1; Developer 2; Laptop 3; Laptop 4; Laptop 7; Laptop 8; PDA 3; PDA 4; Software Engineer 1; Software Engineer 2; System Analyst 1; System Analyst 2 | 480h | 43,568.62 | 43,568.62 |
| 44 | 1.3.4.2 | Design Phase |  | 15d | 2022-01-14 | 2022-02-04 | 43 | 2021-12-15 | 2022-01-04 | 15d | 0d | Cellphone 3; Cellphone 4; Cellphone 8; Cellphone 9; Desktop 1; Desktop 2; Desktop 3; Desktop 4; Developer 1; Developer 2; Developer 3; Developer 4; Laptop 3; Laptop 4; Laptop 8; Laptop 9; PDA 4; PDA 5; Software Engineer 2; Software Engineer 3; System Analyst 1; System Analyst 2 | 960h | 67,844.82 | 67,844.82 |
| 45 | 1.3.4.3 | Construcion Phase |  | 27.27d | 2022-02-04 | 2022-03-15 | 44 | 2022-01-05 | 2022-02-08 | 25d | 0d | Cellphone 3; Cellphone 4; Desktop 2; Desktop 3; Desktop 4; Desktop 5; Desktop 6; Desktop 7; Desktop 8; Desktop 9; Desktop 10; Developer 2; Developer 3; Developer 4; Developer 5; Developer 6; Developer 7; Developer 8; Developer 9; Developer 10; Laptop 3; Laptop 4; System Analyst 1; System Analyst 2 | 2400h | 126,701.38 | 131,244.82 |
| 46 | 1.3.4.4 | Validation Phase |  | 10d | 2022-03-15 | 2022-03-29 | 45 | 2022-02-09 | 2022-02-22 | 10d | 0d | Cellphone 2; Cellphone 6; Cellphone 10; Cellphone 11; Cellphone 12; Desktop 5; Desktop 6; Developer 5; Developer 6; Laptop 2; Laptop 6; Laptop 10; Laptop 11; Laptop 12; PDA 2; Project Manager 2; Qulaity Engineer 2; Testing Engineer 1; Testing Engineer 2; Testing Engineer 3 | 560h | 38,016.94 | 38,016.94 |
| 47 | 1.3.4.5 | Deployment Phase |  | 10d | 2022-03-29 | 2022-04-12 | 46 | 2022-02-23 | 2022-03-08 | 10d | 0d | Cellphone 3; Cellphone 4; Cellphone 5; Desktop 7; Desktop 8; Desktop 9; Desktop 10; Developer 7; Developer 8; Developer 9; Developer 10; Laptop 3; Laptop 4; Laptop 5; Quality Engineer 1; System Analyst 1; System Analyst 2 | 560h | 41,366.43 | 41,366.43 |
| 48 | 1.3.4.6 | Closeout |  | 3d | 2022-04-12 | 2022-04-15 | 47 | 2022-03-09 | 2022-03-11 | 3d | 0d | Cellphone 2; Cellphone 3; Cellphone 5; Cellphone 7; Cellphone 10; Laptop 2; Laptop 3; Laptop 5; Laptop 7; Laptop 10; PDA 2; PDA 3; Project Manager 2; Quality Engineer 1; Software Engineer 1; System Analyst 1; Testing Engineer 1 | 120h | 20,604.05 | 20,604.05 |
| 49 | 1.3.4.7 | Release 4 Complete | milestone | 0d | 2022-04-15 | 2022-04-15 | 48 | 2022-03-11 | 2022-03-11 | 0d | 0d | Cellphone 1; Cellphone 2; Laptop 1; Laptop 2; PDA 1; PDA 2; Project Manager 1; Project Manager 2 |  |  |  |
| 50 | 1.3.5 | Execution Complete | milestone | 0d | 2022-04-15 | 2022-04-15 | 18, 26, 34, 42 | 2022-03-11 | 2022-03-11 | 0d | 0d |  |  |  |  |
| 51 | 1.4 | Project Closeout |  | 1d | 2022-04-15 | 2022-04-18 | 17 | 2022-03-14 | 2022-03-14 | 1d | 0d | Cellphone 2; Laptop 2; PDA 2; Project Manager 2 | 8h | 3,834.92 | 3,834.92 |
| 52 | 1.5 | Project Comlete | milestone | 0d | 2022-04-18 | 2022-04-18 | 51 | 2022-03-14 | 2022-03-14 | 0d | 0d | Cellphone 1; Laptop 1; PDA 1; Project Manager 1 |  |  |  |
